# Проект оптимизированный

Schedule from MS Project, 2022-12-16 to 2024-03-26, costs in ₽.

## Calendars

- Стандартный: Mon-Fri 09:00-13:00, 14:00-18:00; Sat-Sun off.

## Resources

| Resource | Rate | Cost per use |
| --- | --- | --- |
| Продюсер | 937.5 |  |
| Режиссер | 781.25 |  |
| Сценаристы | 750 |  |
| Аналитики | 1250 |  |
| Художники-аниматоры | 1562.5 |  |
| Художники-прорисовщики | 1250 |  |
| Художники-заливщики | 937.5 |  |
| Компоновщики | 937.5 |  |
| Музыканты | 937.5 |  |
| Специалист по спеэффектам | 468.75 |  |
| Актеры озвучки | 2500 |  |
| Бумага |  | 20000 |
| Канцелярия |  | 10000 |
| Катриджы |  | 10000 |
| Поддержка ПО |  | 200000 |
| Сетевое хранилище |  | 300000 |

## Schedule

| ID | WBS | Task | Duration | Start | Finish | Predecessors | Total slack | Free slack | Resources | Work | Cost |
| --- | --- | --- | --- | --- | --- | --- | --- | --- | --- | --- | --- |
| 1 | 1 | **Создание анимационного мультфильма** | 333d | 2022-12-16 | 2024-03-26 |  | 0d |  |  | 5667.68h | 6,387,450 |
| 2 | 1.1 | **Этап - Определение целевой аудитории, исходящей из идеи мультфильма** | 7d | 2022-12-16 | 2022-12-26 |  | 0d |  |  | 87.68h | 92,200 |
| 3 | 1.1.1 | Выбор идеи мультфильма | 3d | 2022-12-16 | 2022-12-20 |  | 0d |  | Продюсер | 24h | 22,500 |
| 4 | 1.1.2 | Выявление целей мультфильма (что хочет донести, рассказать и показать мультфильм, какую проблему иллюстрирует, зачем и для чего) | 4d | 2022-12-21 | 2022-12-26 | 3 | 0d |  | Продюсер [33%] | 10.56h | 9,900 |
| 5 | 1.1.3 | Выбор целевой аудитории | 4d | 2022-12-21 | 2022-12-26 | 3 | 0d |  | Аналитики; Продюсер [33%] | 42.56h | 49,900 |
| 6 | 1.1.4 | Выбор концепции (понимания предмета) | 4d | 2022-12-21 | 2022-12-26 | 3 | 0d |  | Продюсер [33%] | 10.56h | 9,900 |
| 7 | 1.2 | **Этап - Написание сценария мультфильма** | 81d | 2022-12-27 | 2023-04-18 |  | 0d |  |  | 680h | 516,500 |
| 8 | 1.2.1 | **Набросок основных сюжетных действий** | 56d | 2022-12-27 | 2023-03-14 |  | 0d |  |  | 448h | 336,000 |
| 9 | 1.2.1.1 | Определение и написание главных сцен | 28d | 2022-12-27 | 2023-02-02 | 6, 5, 4 | 0d |  | Сценаристы | 224h | 168,000 |
| 10 | 1.2.1.2 | Проработка промежуточных сцен | 28d | 2023-02-03 | 2023-03-14 | 9 | 0d |  | Сценаристы | 224h | 168,000 |
| 11 | 1.2.2 | Выявление сюжетных дыр и ошибок | 2d | 2023-03-15 | 2023-03-16 | 10 | 0d |  | Сценаристы; Продюсер; Режиссер | 48h | 39,500 |
| 12 | 1.2.3 | Исправление сценария | 21d | 2023-03-17 | 2023-04-14 | 11 | 0d |  | Сценаристы | 168h | 126,000 |
| 13 | 1.2.4 | Утверждение сценария | 2d | 2023-04-17 | 2023-04-18 | 12 | 0d |  | Продюсер | 16h | 15,000 |
| 14 | 1.3 | **Этап - Подбор референсов** | 24d | 2023-04-19 | 2023-05-22 |  | 0d |  |  | 656h | 602,500 |
| 15 | 1.3.1 | **Подбор аудио референсов** | 21d | 2023-04-19 | 2023-05-17 |  | 0d |  |  | 336h | 236,250 |
| 16 | 1.3.1.1 | Музыка/музыкальные композиции | 21d | 2023-04-19 | 2023-05-17 | 13 | 0d |  | Музыканты | 168h | 157,500 |
| 17 | 1.3.1.2 | Спецэффекты | 21d | 2023-04-19 | 2023-05-17 | 13 | 0d |  | Специалист по спеэффектам | 168h | 78,750 |
| 18 | 1.3.2 | **Подбор визуальных референсов** | 14d | 2023-04-19 | 2023-05-08 |  | 7d |  |  | 224h | 280,000 |
| 19 | 1.3.2.1 | Зарисовки персонажей | 14d | 2023-04-19 | 2023-05-08 | 13 | 7d |  | Художники-прорисовщики | 112h | 140,000 |
| 20 | 1.3.2.2 | Зарисовки локаций | 14d | 2023-04-19 | 2023-05-08 | 13 | 7d |  | Художники-прорисовщики | 112h | 140,000 |
| 21 | 1.3.3 | Создание итогового коллажа референсов, представляющие общий вид и концепцию | 3d | 2023-05-18 | 2023-05-22 | 19, 20, 16, 17 | 0d |  | Музыканты; Специалист по спеэффектам; Продюсер; Художники-прорисовщики | 96h | 86,250 |
| 22 | 1.4 | **Этап - Озвучание** | 35d | 2023-04-19 | 2023-06-06 |  | 56d |  |  | 448h | 472,500 |
| 23 | 1.4.1 | Подбор актеров озвучания | 21d | 2023-04-19 | 2023-05-17 | 13 | 56d | 0d | Продюсер; Режиссер | 336h | 288,750 |
| 24 | 1.4.2 | Запись реплик | 14d | 2023-05-18 | 2023-06-06 | 23 | 56d |  | Режиссер [50%]; Актеры озвучки | 112h | 183,750 |

| ID | WBS | Task | Duration | Start | Finish | Predecessors | Total slack | Free slack | Resources | Work | Cost |
| --- | --- | --- | --- | --- | --- | --- | --- | --- | --- | --- | --- |
| 25 | 1.5 | **Этап - Создание моделей для персонажей, локации и фоны** | 123d | 2022-12-27 | 2023-06-15 |  | 0d |  |  | 444h | 493,750 |
| 26 | 1.5.1 | **Определение и разработка общего стиля** | 12d | 2022-12-27 | 2023-01-11 |  | 93d |  |  | 192h | 210,000 |
| 27 | 1.5.1.1 | Анализ стиля для целевой аудитории | 10d | 2022-12-27 | 2023-01-09 | 4, 5, 6 | 93d | 0d | Аналитики; Продюсер | 160h | 175,000 |
| 28 | 1.5.1.2 | Утверждение стиля | 2d | 2023-01-10 | 2023-01-11 | 27 | 93d |  | Аналитики; Продюсер | 32h | 35,000 |
| 29 | 1.5.2 | **Создание концептуальных моделей для персонажей** | 13d | 2023-05-23 | 2023-06-08 |  | 0d |  |  | 96h | 105,000 |
| 30 | 1.5.2.1 | Набросок персонажей | 3d | 2023-05-23 | 2023-05-25 | 28, 21 | 0d |  | Художники-прорисовщики | 24h | 30,000 |
| 31 | 1.5.2.2 | Выявление ошибок | 4d | 2023-05-26 | 2023-05-31 | 30 | 0d |  | Продюсер [50%]; Режиссер [50%]; Художники-прорисовщики | 40h | 40,000 |
| 32 | 1.5.2.3 | Исправление ошибок | 2d | 2023-06-01 | 2023-06-02 | 31 | 0d |  | Художники-прорисовщики | 16h | 20,000 |
| 33 | 1.5.2.4 | Утверждение моделей персонажей | 4d | 2023-06-05 | 2023-06-08 | 32 | 0d |  | Продюсер [50%] | 16h | 15,000 |
| 34 | 1.5.3 | **Создание фонов и локаций** | 11d | 2023-05-23 | 2023-06-06 |  | 2d |  |  | 76h | 91,250 |
| 35 | 1.5.3.1 | Разработка фонов и локаций | 3d | 2023-05-23 | 2023-05-25 | 28, 21 | 2d | 0d | Художники-прорисовщики | 24h | 30,000 |
| 36 | 1.5.3.2 | Отрисовка фонов и локаций | 5d | 2023-05-26 | 2023-06-01 | 35 | 2d | 0d | Художники-прорисовщики | 40h | 50,000 |
| 37 | 1.5.3.3 | Утверждение фонов и локаций | 3d | 2023-06-02 | 2023-06-06 | 36 | 2d |  | Продюсер [50%] | 12h | 11,250 |
| 38 | 1.5.4 | Обкатка персонажей, фонов, локаций | 5d | 2023-06-09 | 2023-06-15 | 33, 37 | 0d |  | Художники-прорисовщики; Художники-заливщики | 80h | 87,500 |
| 39 | 1.6 | **Этап - Создание предварительной анимации** | 79d | 2023-06-16 | 2023-10-04 |  | 0d |  |  | 1128h | 1,402,500 |
| 40 | 1.6.1 | **Раскадровка** | 49d | 2023-06-16 | 2023-08-23 |  | 0d |  |  | 648h | 802,500 |
| 41 | 1.6.1.1 | Изображение основных сцен действий | 21d | 2023-06-16 | 2023-07-14 | 38 | 0d |  | Художники-аниматоры | 168h | 262,500 |
| 42 | 1.6.1.2 | Выявление ошибок | 4d | 2023-07-17 | 2023-07-20 | 41 | 0d |  | Продюсер; Режиссер; Художники-аниматоры | 96h | 105,000 |
| 43 | 1.6.1.3 | Испраление ошибок | 21d | 2023-07-21 | 2023-08-18 | 42 | 0d |  | Режиссер; Художники-аниматоры | 336h | 393,750 |
| 44 | 1.6.1.4 | Утверждение раскадровки | 3d | 2023-08-21 | 2023-08-23 | 43 | 0d |  | Продюсер; Режиссер | 48h | 41,250 |
| 45 | 1.6.2 | **Аниматик** | 30d | 2023-08-24 | 2023-10-04 |  | 0d |  |  | 480h | 600,000 |
| 46 | 1.6.2.1 | Создание аниматика согласно времени и музыке | 30d | 2023-08-24 | 2023-10-04 | 44, 16, 17, 24 | 0d |  | Художники-аниматоры; Компоновщики | 480h | 600,000 |
| 47 | 1.7 | **Этап - Итоговая анимация** | 120d | 2023-10-05 | 2024-03-20 |  | 0d |  |  | 2160h | 2,212,500 |
| 48 | 1.7.1 | Отрисовка основных кадров | 30d | 2023-10-05 | 2023-11-15 | 46 | 0d |  | Художники-прорисовщики; Художники-заливщики | 480h | 525,000 |
| 49 | 1.7.2 | Отрисовка промежуточных кадров | 60d | 2023-11-16 | 2024-02-07 | 48 | 0d |  | Художники-прорисовщики; Художники-заливщики | 960h | 1,050,000 |
| 50 | 1.7.3 | Постпродакшн/компоузинг | 30d | 2024-02-08 | 2024-03-20 | 49 | 0d |  | Компоновщики; Режиссер; Продюсер | 720h | 637,500 |
| 51 | 1.8 | Представление анимационного мультфильма | 4d | 2024-03-21 | 2024-03-26 | 50 | 0d |  | Продюсер; Режиссер | 64h | 55,000 |
